# 2.mintafeladat_erőforrásokig

Schedule from MS Project, 2026-02-27 to 2026-05-22, status date 2026-03-27, costs in Ft, A marks actual dates.

## Calendars

- Szabványos: Mon-Fri 08:00-12:00, 13:00-17:00; Sat-Sun off.

## Resources

| Resource | Rate |
| --- | --- |
| Keller András | 9000 |
| Gruber Otto | 6000 |
| Marton Gábor | 150 |
| Boda Eszter | 6000 |
| Varga Kinga | 6000 |
| Deák Tanás | 2000 |
| Révész Gabriella | 2000 |
| Billler Ákos | 2000 |
| Sipos Zoltán | 2000 |
| Agárdi Péter | 6000 |
| Hovec Éva | 6000 |
| Hetényi Lázár | 7000 |
| Szállítmányozó cég | 250000 |
| íroda bútorok beszerzési költségei | 2300000 |
| Számítógépek beszerzési költsége | 7500000 |
| Hálozat építés anyag költsége | 900000 |
| Szoftverköltség | 5600000 |

## Schedule

| ID | WBS | Task | Type | Duration | Start | Finish | Predecessors | Complete | Remaining | Baseline start | Baseline finish | Baseline duration | Total slack | Free slack | Constraint | Deadline | Resources | Work | Actual work | Cost | Baseline cost | Actual cost |
| --- | --- | --- | --- | --- | --- | --- | --- | --- | --- | --- | --- | --- | --- | --- | --- | --- | --- | --- | --- | --- | --- | --- |
| 1 | 1 | **ügyfélszolgálati és szervízosztály kialakítása** |  | 61d | 2026-02-27 A | 2026-05-22 |  | 14% | 52.34d | 2026-02-27 | 2026-05-05 | 48d | 0d |  |  |  |  | 1144h | 162.4h | 22,176,800 | 22,112,800 | 4,869,200 |
| 2 | 1.1 | **előkészítő munkálatok** |  | 35.7d | 2026-02-27 A | 2026-04-17 |  | 58% | 14.99d | 2026-02-27 | 2026-04-06 | 27d | 25.3d |  |  |  |  | 280h | 162.4h | 10,824,800 | 10,824,800 | 4,869,200 |
| 3 | 1.1.1 | irodabútorok beszerzése |  | 14d | 2026-02-27 A | 2026-03-18 A |  | 100% |  | 2026-02-27 | 2026-03-18 | 14d |  |  |  |  | Marton Gábor; íroda bútorok beszerzési költségei | 112h | 112h | 2,316,800 | 2,316,800 | 2,316,800 |
| 4 | 1.1.2 | műszaki és informatikai eszközök beszerzése |  | 21d | 2026-03-09 A | 2026-04-17 | 10FF-5d | 30% | 14.7d | 2026-03-09 | 2026-04-06 | 21d | 25.3d |  |  |  | Boda Eszter; Számítógépek beszerzési költsége | 168h | 50.4h | 8,508,000 | 8,508,000 | 2,552,400 |
| 5 | 1.2 | **osztály berendezése** |  | 8d | 2026-03-30 | 2026-04-08 |  |  |  | 2026-03-19 | 2026-03-30 | 8d | 3d |  |  |  |  | 128h |  | 506,000 | 442,000 |  |
| 6 | 1.2.1 | irodabútorok leszállítása |  | 2d | 2026-03-30 | 2026-03-31 | 3 |  |  | 2026-03-19 | 2026-03-20 | 2d | 38d |  | start no earlier than 2026-03-27 |  | Szállítmányozó cég |  |  | 250,000 | 250,000 |  |
| 7 | 1.2.2 | irodák berendezése |  | 8d | 2026-03-30 | 2026-04-08 |  |  |  | 2026-03-23 | 2026-03-30 | 6d | 3d | 0d | start no earlier than 2026-03-27 |  | Billler Ákos; Sipos Zoltán | 128h |  | 256,000 | 192,000 |  |
| 8 | 1.2.3 | épület kivitelezése kész | milestone | 0d | 2026-04-08 | 2026-04-08 | 7 |  |  | 2026-03-30 | 2026-03-30 | 0d | 3d |  |  | 2026-04-13 |  |  |  |  |  |  |
| 9 | 1.3 | **logisztika** |  | 25d | 2026-04-09 | 2026-05-13 |  |  |  | 2026-03-31 | 2026-05-04 | 25d | 6d |  |  |  |  | 240h |  | 1,370,000 | 1,370,000 |  |
| 10 | 1.3.1 | meglévő eszközpark áttelepítése |  | 10d | 2026-04-09 | 2026-04-22 | 7 |  |  | 2026-03-31 | 2026-04-13 | 10d | 6d | 0d |  |  | Szállítmányozó cég |  |  | 250,000 | 250,000 |  |
| 11 | 1.3.2 | személyzet áttelepítése |  | 5d | 2026-05-07 | 2026-05-13 | 14 |  |  | 2026-04-28 | 2026-05-04 | 5d | 6d | 0d |  |  | Deák Tanás; Révész Gabriella | 80h |  | 160,000 | 160,000 |  |
| 12 | 1.3.3 | új munkatársak felvétele |  | 20d | 2026-04-16 | 2026-05-13 | 11FF |  |  | 2026-04-07 | 2026-05-04 | 20d | 7d |  |  |  | Gruber Otto | 160h |  | 960,000 | 960,000 |  |
| 13 | 1.4 | **informatikai hálózat kialakítása** |  | 40d | 2026-03-30 | 2026-05-22 |  |  |  | 2026-03-10 | 2026-05-05 | 41d | 0d |  |  |  |  | 496h |  | 9,476,000 | 9,476,000 |  |
| 14 | 1.4.1 | új informatikai eszközök telepítése |  | 10d | 2026-04-23 | 2026-05-06 | 10 |  |  | 2026-04-14 | 2026-04-27 | 10d | 6d | 0d |  |  | Agárdi Péter; Szoftverköltség | 80h |  | 6,080,000 | 6,080,000 |  |
| 15 | 1.4.2 | hálózat csatlakoztatása a vállalat meglévő informatikai hálózatához |  | 4d | 2026-05-07 | 2026-05-12 | 14 |  |  | 2026-04-28 | 2026-05-01 | 4d | 6d | 0d |  |  | Agárdi Péter; Hálozat építés anyag költsége | 32h |  | 1,092,000 | 1,092,000 |  |
| 16 | 1.4.3 | informatikai hálózat tesztelése |  | 5d | 2026-05-07 | 2026-05-13 | 15SS |  |  | 2026-04-28 | 2026-05-04 | 5d | 6d | 0d |  |  | Hovec Éva | 40h |  | 240,000 | 240,000 |  |
| 17 | 1.4.4 | teszteredmények dokumentálása |  | 3d | 2026-05-12 | 2026-05-14 | 16FS-2d |  |  | 2026-05-01 | 2026-05-05 | 3d | 6d |  |  |  | Hovec Éva | 24h |  | 144,000 | 144,000 |  |
| 18 | 1.4.5 | részleg megnyitásához csatlakozó marketing- és reklámtevékenységek |  | 40d | 2026-03-30 | 2026-05-22 | 19SF |  |  | 2026-03-10 | 2026-05-05 | 40d | 0d |  | start no earlier than 2026-03-27 |  | Varga Kinga | 320h |  | 1,920,000 | 1,920,000 |  |
| 19 | 1.5 | ügyfélszolgálati és szervizosztály megnyitása | milestone | 1d | 2026-05-14 | 2026-05-14 | 11 |  |  | 2026-05-05 | 2026-05-05 | 1d | 6d |  |  |  |  |  |  |  |  |  |
